# PCHMySQLUpgrade

Schedule from ProjectLibre, 2016-06-01 to 2016-07-18.

## Calendars

- Standard: Mon-Fri 08:00-12:00, 13:00-17:00; Sat-Sun off.

## Resources

| Resource |
| --- |
| Unassigned |
| Marcelo |
| Kedar |
| Rohit |
| Martin |
| Paul |
| Paul |
| Okan |

## Schedule

| ID | WBS | Task | Duration | Start | Finish | Predecessors | Total slack | Resources |
| --- | --- | --- | --- | --- | --- | --- | --- | --- |
| 1 | 1 | **PCH MySQL Upgrade** | 34d | 2016-06-01 08:00 | 2016-07-18 17:00 |  |  |  |
| 2 | 1.1 | **Deprecated value check** | 1d | 2016-06-01 08:00 | 2016-06-01 17:00 |  | 3300d |  |
| 3 | 1.1.1 | Check for deprecated values on PPZMDB1-5 | 0.5d | 2016-06-01 08:00 | 2016-06-01 13:00 |  | 3350d | Marcelo |
| 4 | 1.1.2 | Check for deprecated values on PPZMDB 6-10 | 0.5d | 2016-06-01 08:00 | 2016-06-01 13:00 |  | 3350d | Marcelo |
| 5 | 1.1.3 | Check for deprecated values on pplaydb | 0.5d | 2016-06-01 08:00 | 2016-06-01 13:00 |  | 3350d | Okan |
| 6 | 1.1.4 | check for deprecated values on pmidb | 0.5d | 2016-06-01 08:00 | 2016-06-01 13:00 |  | 3350d | Kedar |
| 7 | 1.1.5 | check for deprecated values on ppchdb | 0.5d | 2016-06-01 08:00 | 2016-06-01 13:00 |  | 3350d | Martin |
| 8 | 1.1.6 | check for deprecated values on pplaydb | 0.5d | 2016-06-01 08:00 | 2016-06-01 13:00 |  | 3350d | Okan |
| 9 | 1.1.7 | check for deprecated values on plottodb | 0.5d | 2016-06-01 08:00 | 2016-06-01 13:00 |  | 3350d | Marcelo |
| 10 | 1.1.8 | check for deprecated values on psearchdb | 1d | 2016-06-01 08:00 | 2016-06-01 17:00 |  | 3300d |  |
| 11 | 1.2 | **Ansible setup** | 13d | 2016-06-01 08:00 | 2016-06-17 17:00 |  |  |  |
| 12 | 1.2.1 | setup yum repository for ansible server | 1d | 2016-06-01 08:00 | 2016-06-01 17:00 |  |  | Martin |
| 13 | 1.2.2 | setup ansible server | 10d | 2016-06-02 08:00 | 2016-06-15 17:00 | 12 |  | Martin |
| 14 | 1.2.3 | set up vault | 0.5d | 2016-06-16 08:00 | 2016-06-16 13:00 | 13 |  | Martin |
| 15 | 1.2.4 | set up initial MySQL upgrade | 1d | 2016-06-16 13:00 | 2016-06-17 13:00 | 14 |  | Martin |
| 16 | 1.2.5 | setup reversion script | 0.5d | 2016-06-17 13:00 | 2016-06-17 17:00 | 15 |  | Martin |
| 17 | 1.2.6 | setup percona toolkit ansible playbook | 1d | 2016-06-02 08:00 | 2016-06-02 17:00 |  | 1100d | Rohit |
| 18 | 1.3 | **QA Testing** | 21d | 2016-06-20 08:00 | 2016-07-18 17:00 | 11 |  |  |
| 19 | 1.3.1 | QA testing of pchdb | 3d | 2016-06-20 08:00 | 2016-06-22 17:00 | 11 |  |  |
| 20 | 1.3.2 | QA testing of ppmzdb1-5 | 3d | 2016-06-23 08:00 | 2016-06-27 17:00 | 19 |  |  |
| 21 | 1.3.3 | QA testing of ppmzdb6-10 | 3d | 2016-06-28 08:00 | 2016-06-30 17:00 | 20 |  |  |
| 22 | 1.3.4 | QA testing of pplaydb | 3d | 2016-07-01 08:00 | 2016-07-05 17:00 | 21 |  |  |
| 23 | 1.3.5 | QA testing of pmidb | 3d | 2016-07-06 08:00 | 2016-07-08 17:00 | 22 |  |  |
| 24 | 1.3.6 | QA testing of plottodb | 3d | 2016-07-11 08:00 | 2016-07-13 17:00 | 23 |  |  |
| 25 | 1.3.7 | QA testing of psearchdb | 3d | 2016-07-14 08:00 | 2016-07-18 17:00 | 24 |  |  |

Notes:
- 3: https://secure.pythian.com/track/cr/1062108
- 4: https://secure.pythian.com/track/cr/1062109
- 5: https://secure.pythian.com/track/cr/1059932
- 6: https://secure.pythian.com/track/cr/1063002
- 7: https://secure.pythian.com/track/cr/1056827
- 8: https://secure.pythian.com/track/cr/1059932
- 9: https://secure.pythian.com/track/cr/1059950
- 12: https://secure.pythian.com/track/cr/1060878
- 13: https://secure.pythian.com/track/cr/1066702
